# Cronograma

Schedule from MS Project, 2017-03-20 to 2017-06-30, costs in R$, A marks actual dates.

## Calendars

- Padrão: Mon-Fri 09:00-12:00, 13:00-18:00; Sat-Sun off.

## Resources

| Resource | Rate |
| --- | --- |
| Matheus | 10 |
| Any | 15 |
| Clayton | 10 |
| Felipe | 10 |
| Henrique | 12 |

## Schedule

| ID | WBS | Task | Duration | Start | Finish | Predecessors | Complete | Remaining | Actual start | Actual finish | Baseline start | Baseline finish | Baseline duration | Resources | Work | Actual work | Cost | Baseline cost | Actual cost |
| --- | --- | --- | --- | --- | --- | --- | --- | --- | --- | --- | --- | --- | --- | --- | --- | --- | --- | --- | --- |
| 1 | 1 | **Sistema Contabil** | 67d? | 2017-03-30 | 2017-06-30 |  | 70% | 19.94d? | 2017-03-20 |  | 2017-03-27 | 2017-06-27 | 67d |  | 871h | 696h | 10,426 | 6,856 | 8,360 |
| 2 | 1.1 | **Analise** | 3d | 2017-04-23 | 2017-04-25 |  | 100% |  | 2017-04-24 | 2017-05-02 | 2017-04-20 | 2017-04-24 | 3d |  | 136h | 136h | 1,616 | 1,416 | 1,616 |
| 3 | 1.1.1 | DRE | 6d | 2017-04-24 A | 2017-05-01 A |  | 100% |  |  |  | 2017-04-20 | 2017-04-21 | 16h | Matheus; Any | 96h | 96h | 1,200 | 1,000 | 1,200 |
| 4 | 1.1.2 | Orçamento Preliminar | 2d | 2017-05-01 A | 2017-05-02 A | 3 | 100% |  |  |  | 2017-04-24 | 2017-04-24 | 3h | Felipe | 16h | 16h | 160 | 160 | 160 |
| 5 | 1.1.3 | Cronograma Premilinar | 2d | 2017-05-01 A | 2017-05-02 A | 3 | 100% |  |  |  | 2017-04-24 | 2017-04-24 | 3h | Clayton | 16h | 16h | 160 | 160 | 160 |
| 6 | 1.1.4 | Cheklist | 1d | 2017-05-01 A | 2017-05-01 A | 3 | 100% |  |  |  | 2017-04-24 | 2017-04-24 | 2h | Henrique | 8h | 8h | 96 | 96 | 96 |
| 7 | 1.2 | **Planejamento** | 2d | 2017-04-24 | 2017-04-25 |  | 100% |  | 2017-04-26 | 2017-05-04 | 2017-04-24 | 2017-04-25 | 2d |  | 56h | 56h | 616 | 616 | 616 |
| 8 | 1.2.1 | Registro de requisitos | 1d | 2017-05-01 A | 2017-05-01 A | 3 | 100% |  |  |  | 2017-04-24 | 2017-04-24 | 8h | Henrique | 8h | 8h | 96 | 96 | 96 |
| 9 | 1.2.2 | Registro de riscos | 1d | 2017-05-01 A | 2017-05-01 A | 3 | 100% |  |  |  | 2017-04-24 | 2017-04-24 | 8h | Any | 8h | 8h | 120 | 120 | 120 |
| 10 | 1.2.3 | Orçamento definitivo | 2d | 2017-05-03 A | 2017-05-04 A | 4 | 100% |  |  |  | 2017-04-24 | 2017-04-25 | 8h | Matheus | 16h | 16h | 160 | 160 | 160 |
| 11 | 1.2.4 | Cronograma definitivo | 1d | 2017-05-03 A | 2017-05-03 A | 5 | 100% |  |  |  | 2017-04-24 | 2017-04-25 | 8h | Felipe | 8h | 8h | 80 | 80 | 80 |
| 12 | 1.2.5 | Plano do projeto definitivo | 2d | 2017-04-26 A | 2017-04-27 A | 2 | 100% |  |  |  | 2017-04-25 | 2017-04-25 | 8h | Clayton | 16h | 16h | 160 | 160 | 160 |
| 13 | 1.3 | **Release 01** | 1d | 2017-04-26 | 2017-04-26 |  | 100% |  | 2017-04-28 | 2017-05-04 | 2017-04-26 | 2017-05-23 | 20d |  | 256h | 256h | 3,232 | 2,048 | 3,232 |
| 14 | 1.3.1 | **Implementação / Teste** | 1d | 2017-04-26 | 2017-04-26 |  | 100% |  | 2017-04-28 | 2017-05-04 | 2017-04-26 | 2017-05-02 | 4.25d |  | 256h | 256h | 3,232 | 2,048 | 3,232 |
| 15 | 1.3.1.1 | **Modelagem UML** | 1d | 2017-04-26 | 2017-04-26 |  | 100% |  | 2017-05-01 | 2017-05-01 | 2017-04-26 | 2017-04-27 | 2d |  | 16h | 16h | 160 | 160 | 160 |
| 16 | 1.3.1.1.1 | Diagrama de caso de uso | 1d | 2017-05-01 A | 2017-05-01 A | 3 | 100% |  |  |  | 2017-04-26 | 2017-04-27 | 16h | Matheus | 8h | 8h | 80 | 80 | 80 |
| 17 | 1.3.1.1.2 | Diagrama de classes | 1d | 2017-05-01 A | 2017-05-01 A | 3 | 100% |  |  |  | 2017-04-26 | 2017-04-27 | 16h | Clayton | 8h | 8h | 80 | 80 | 80 |
| 18 | 1.3.1.2 | **Implementação** | 1d | 2017-04-28 A | 2017-04-28 | 15 | 100% |  |  | 2017-05-04 | 2017-04-28 | 2017-05-02 | 2.25d |  | 240h | 240h | 3,072 | 1,888 | 3,072 |
| 19 | 1.3.1.2.1 | **[RFC01] Manter Usuários** | 1d | 2017-04-28 A | 2017-04-28 |  | 100% |  |  | 2017-05-04 | 2017-04-28 | 2017-05-01 | 1.75d |  | 96h | 96h | 1,440 | 960 | 1,440 |
| 20 | 1.3.1.2.1.1 | [RFS01] Cadastrar Usuários | 3d | 2017-04-28 A | 2017-05-02 A | 15 | 100% |  |  |  | 2017-04-28 | 2017-05-01 | 14h | Any | 24h | 24h | 360 | 240 | 360 |
| 21 | 1.3.1.2.1.2 | [RFS02] Consultar Usuários | 3d | 2017-05-02 A | 2017-05-04 A | 20 | 100% |  |  |  | 2017-04-28 | 2017-05-01 | 14h | Any | 24h | 24h | 360 | 240 | 360 |
| 22 | 1.3.1.2.1.3 | [RFS03] Alterar Usuários | 3d | 2017-05-02 A | 2017-05-04 A | 20 | 100% |  |  |  | 2017-04-28 | 2017-05-01 | 14h | Any | 24h | 24h | 360 | 240 | 360 |
| 23 | 1.3.1.2.1.4 | [RFS04] Remover Usuários | 3d | 2017-05-02 A | 2017-05-04 A | 20 | 100% |  |  |  | 2017-04-28 | 2017-05-01 | 14h | Any | 24h | 24h | 360 | 240 | 360 |
| 24 | 1.3.1.2.2 | **[RFC02] Manter Contato** | 1d | 2017-04-28 A | 2017-04-28 |  | 100% |  |  | 2017-05-04 | 2017-04-28 | 2017-05-01 | 1.5d |  | 96h | 96h | 1,152 | 768 | 1,152 |
| 25 | 1.3.1.2.2.1 | [RFS05] Cadastrar Contato | 3d | 2017-04-28 A | 2017-05-02 A | 15 | 100% |  |  |  | 2017-04-28 | 2017-05-01 | 12h | Henrique | 24h | 24h | 288 | 192 | 288 |
| 26 | 1.3.1.2.2.2 | [RFS06] Consultar Contato | 3d | 2017-05-02 A | 2017-05-04 A | 25 | 100% |  |  |  | 2017-04-28 | 2017-05-01 | 12h | Henrique | 24h | 24h | 288 | 192 | 288 |
| 27 | 1.3.1.2.2.3 | [RFS07] Alterar Contato | 3d | 2017-05-02 A | 2017-05-04 A | 25 | 100% |  |  |  | 2017-04-28 | 2017-05-01 | 12h | Henrique | 24h | 24h | 288 | 192 | 288 |
| 28 | 1.3.1.2.2.4 | [RFS08] Remover Contato | 3d | 2017-05-02 A | 2017-05-04 A | 25 | 100% |  |  |  | 2017-04-28 | 2017-05-01 | 12h | Henrique | 24h | 24h | 288 | 192 | 288 |

| ID | WBS | Task | Duration | Start | Finish | Predecessors | Complete | Actual start | Actual finish | Baseline start | Baseline finish | Baseline duration | Resources | Work | Actual work | Cost | Baseline cost | Actual cost |
| --- | --- | --- | --- | --- | --- | --- | --- | --- | --- | --- | --- | --- | --- | --- | --- | --- | --- | --- |
| 29 | 1.3.1.2.3 | **Teste** | 1d | 2017-05-01 A | 2017-05-02 |  | 100% |  | 2017-05-04 | 2017-05-01 | 2017-05-02 | 0.75d |  | 48h | 48h | 480 | 160 | 480 |
| 30 | 1.3.1.2.3.1 | [RFC01] Manter Usuários | 3d | 2017-05-01 A | 2017-05-04 A | 19 | 100% |  |  | 2017-05-01 | 2017-05-02 | 4h | Matheus | 24h | 24h | 240 | 80 | 240 |
| 31 | 1.3.1.2.3.2 | [RFC02] Manter Contato | 3d | 2017-05-01 A | 2017-05-04 A | 24 | 100% |  |  | 2017-05-01 | 2017-05-01 | 4h | Felipe | 24h | 24h | 240 | 80 | 240 |
| 32 | 1.4 | **Release 02** | 7d | 2017-05-23 A | 2017-05-31 |  | 100% |  | 2017-05-26 | 2017-05-23 | 2017-05-31 | 7d |  | 144h | 144h | 1,496 | 1,496 | 1,496 |
| 33 | 1.4.1 | **Implementação / Teste** | 6d | 2017-05-23 A | 2017-05-30 |  | 100% |  | 2017-05-26 | 2017-05-23 | 2017-05-30 | 6d |  | 128h | 128h | 1,280 | 1,280 | 1,280 |
| 34 | 1.4.1.1 | **Implementação** | 6d | 2017-05-23 A | 2017-05-30 |  | 100% |  | 2017-05-26 | 2017-05-23 | 2017-05-30 | 6d |  | 128h | 128h | 1,280 | 1,280 | 1,280 |
| 35 | 1.4.1.1.1 | **[RFC03] Manter Conta Bancária** | 3d | 2017-05-23 A | 2017-05-25 |  | 100% |  | 2017-05-26 | 2017-05-23 | 2017-05-25 | 3d |  | 64h | 64h | 640 | 640 | 640 |
| 36 | 1.4.1.1.1.1 | [RFS09] Cadastrar Conta Bancaria | 2d | 2017-05-23 A | 2017-05-24 A | 15 | 100% |  |  | 2017-05-23 | 2017-05-24 | 14h | Matheus | 16h | 16h | 160 | 160 | 160 |
| 37 | 1.4.1.1.1.2 | [RFS10] Consultar Conta Bancária | 2d | 2017-05-25 A | 2017-05-26 A | 36 | 100% |  |  | 2017-05-23 | 2017-05-24 | 14h | Matheus | 16h | 16h | 160 | 160 | 160 |
| 38 | 1.4.1.1.1.3 | [RFS11] Alterar Conta Bancaria | 2d | 2017-05-25 A | 2017-05-26 A | 36 | 100% |  |  | 2017-05-23 | 2017-05-24 | 14h | Matheus | 16h | 16h | 160 | 160 | 160 |
| 39 | 1.4.1.1.1.4 | [RFS12] Remover Conta Bancaria | 2d | 2017-05-25 A | 2017-05-26 A | 36 | 100% |  |  | 2017-05-23 | 2017-05-24 | 14h | Matheus | 16h | 16h | 160 | 160 | 160 |
| 40 | 1.4.1.1.2 | **[RFC04] Manter Despesas** | 3d | 2017-05-23 A | 2017-05-25 |  | 100% |  | 2017-05-26 | 2017-05-23 | 2017-05-25 | 3d |  | 64h | 64h | 640 | 640 | 640 |
| 41 | 1.4.1.1.2.1 | [RFS13] Cadastrar Despesas | 2d | 2017-05-23 A | 2017-05-24 A | 15 | 100% |  |  | 2017-05-23 | 2017-05-24 | 12h | Felipe; Clayton | 16h | 16h | 160 | 160 | 160 |
| 42 | 1.4.1.1.2.2 | [RFS14] Consultar Despesas | 2d | 2017-05-25 A | 2017-05-26 A | 41 | 100% |  |  | 2017-05-23 | 2017-05-24 | 12h | Felipe; Clayton | 16h | 16h | 160 | 160 | 160 |
| 43 | 1.4.1.1.2.3 | [RFS15] Alterar Despesas | 2d | 2017-05-25 A | 2017-05-26 A | 41 | 100% |  |  | 2017-05-23 | 2017-05-24 | 12h | Felipe; Clayton | 16h | 16h | 160 | 160 | 160 |
| 44 | 1.4.1.1.2.4 | [RFS16] Remover Despesas | 2d | 2017-05-25 A | 2017-05-26 A | 41 | 100% |  |  | 2017-05-23 | 2017-05-24 | 12h | Felipe; Clayton | 16h | 16h | 160 | 160 | 160 |
| 45 | 1.4.2 | **Teste** | 1d | 2017-05-24 | 2017-05-25 |  | 100% | 2017-05-26 | 2017-05-26 | 2017-05-24 | 2017-05-25 | 1d |  | 16h | 16h | 216 | 216 | 216 |
| 46 | 1.4.2.1 | [RFC03] Manter Conta Bancária | 1d | 2017-05-26 A | 2017-05-26 A | 35 | 100% |  |  | 2017-05-24 | 2017-05-25 | 4h | Any | 8h | 8h | 120 | 120 | 120 |
| 47 | 1.4.2.2 | [RFC04] Manter Despesas | 1d | 2017-05-26 A | 2017-05-26 A | 40 | 100% |  |  | 2017-05-24 | 2017-05-24 | 4h | Henrique | 8h | 8h | 96 | 96 | 96 |
| 48 | 1.5 | **Release 03** | 7d? | 2017-05-30 A | 2017-06-07 |  | 100% |  | 2017-06-05 | 2017-05-30 | 2017-06-07 | 7d |  | 104h | 104h | 1,400 | 1,280 | 1,400 |
| 49 | 1.5.1 | **Implementação / Teste** | 3d | 2017-05-30 A | 2017-06-01 |  | 100% |  | 2017-06-02 | 2017-05-30 | 2017-06-01 | 3d |  | 88h | 88h | 1,240 | 1,120 | 1,240 |
| 50 | 1.5.1.1 | **Implementação** | 3d | 2017-05-30 A | 2017-06-01 |  | 100% |  | 2017-06-02 | 2017-05-30 | 2017-06-01 | 3d |  | 88h | 88h | 1,240 | 1,120 | 1,240 |
| 51 | 1.5.1.1.1 | **[RFC05] Manter Receitas** | 4d | 2017-05-30 A | 2017-06-02 A |  | 100% |  |  | 2017-05-30 | 2017-06-01 | 3d |  | 72h | 72h | 1,080 | 960 | 1,080 |
| 52 | 1.5.1.1.1.1 | [RFS17] Cadastrar Receitas | 3d | 2017-05-30 A | 2017-06-01 A | 15 | 100% |  |  | 2017-05-30 | 2017-05-31 | 14h | Any; Henrique | 24h | 24h | 360 | 240 | 360 |
| 53 | 1.5.1.1.1.2 | [RFS18] Consultar Receitas | 2d | 2017-06-01 A | 2017-06-02 A | 52 | 100% |  |  | 2017-05-30 | 2017-05-31 | 14h | Any; Henrique | 16h | 16h | 240 | 240 | 240 |
| 54 | 1.5.1.1.1.3 | [RFS19] Alterar Receitas | 2d | 2017-06-01 A | 2017-06-02 A | 52 | 100% |  |  | 2017-05-30 | 2017-05-31 | 14h | Any; Henrique | 16h | 16h | 240 | 240 | 240 |
| 55 | 1.5.1.1.1.4 | [RFS20] Remover Receitas | 2d | 2017-06-01 A | 2017-06-02 A | 52 | 100% |  |  | 2017-05-30 | 2017-05-31 | 14h | Any; Henrique | 16h | 16h | 240 | 240 | 240 |

| ID | WBS | Task | Type | Duration | Start | Finish | Predecessors | Complete | Actual start | Actual finish | Baseline start | Baseline finish | Baseline duration | Resources | Work | Actual work | Cost | Baseline cost | Actual cost |
| --- | --- | --- | --- | --- | --- | --- | --- | --- | --- | --- | --- | --- | --- | --- | --- | --- | --- | --- | --- |
| 56 | 1.5.1.1.2 | **[RFC05] Gerar Relatórios** |  | 3d | 2017-05-30 A | 2017-06-01 |  | 100% |  | 2017-05-31 | 2017-05-30 | 2017-06-01 | 3d |  | 16h | 16h | 160 | 160 | 160 |
| 57 | 1.5.1.1.2.1 | [RFS21] Gerar Relatório |  | 2d | 2017-05-30 A | 2017-05-31 A | 15 | 100% |  |  | 2017-05-30 | 2017-05-31 | 12h | Clayton | 16h | 16h | 160 | 160 | 160 |
| 58 | 1.5.2 | **Teste** |  | 1d? | 2017-05-31 | 2017-06-01 |  | 100% | 2017-06-02 | 2017-06-05 | 2017-05-31 | 2017-06-01 | 1d |  | 16h | 16h | 160 | 160 | 160 |
| 59 | 1.5.2.1 | [RFC05] Manter Receitas |  | 1d | 2017-06-05 A | 2017-06-05 A | 51 | 100% |  |  | 2017-06-02 | 2017-06-02 | 4h | Matheus | 8h | 8h | 80 | 80 | 80 |
| 60 | 1.5.2.2 | [RFC05] Gerar Relatório |  | 1d | 2017-06-02 A | 2017-06-02 A | 56 | 100% |  |  | 2017-06-02 | 2017-06-02 | 4h | Felipe | 8h | 8h | 80 | 80 | 80 |
| 61 | 1.6 | **Release 4** |  | 14d? | 2017-03-20 | 2017-04-06 |  |  |  |  | 2017-03-20 | 2017-04-06 | 14d |  |  |  |  |  |  |
| 62 | 1.6.1 | **Fechamento** |  | 14d? | 2017-03-20 | 2017-04-06 |  |  |  |  | 2017-03-20 | 2017-04-06 | 14d |  |  |  |  |  |  |
| 63 | 1.6.1.1 | Implantação | manual | 1d? | 2017-06-08 | 2017-06-08 | 48 |  |  |  | 2017-06-08 | 2017-06-14 | 5d |  |  |  |  |  |  |
| 64 | 1.6.1.2 | Avaliação | manual | 1d? | 2017-06-15 | 2017-06-15 | 63 |  |  |  | 2017-06-15 | 2017-06-21 | 5d |  |  |  |  |  |  |
| 65 | 1.6.1.3 | Conclusão | milestone, manual | 0d? | 2017-06-22 | 2017-06-22 | 64 |  |  |  | 2017-06-22 | 2017-07-11 | 14d |  |  |  |  |  |  |
| 66 | 1.7 | **DESENVOLVIMENTO VERSÃO LARAVEL** |  | 8d | 2017-06-01 | 2017-06-12 |  |  |  |  |  |  |  |  | 175h |  | 2,066 |  |  |
| 67 | 1.7.1 | **Release 01** |  | 2d | 2017-03-30 | 2017-03-31 |  |  |  |  |  |  |  |  | 42h |  | 560 |  |  |
| 68 | 1.7.1.1 | **Implementação / Teste** |  | 0d | 2017-03-30 | 2017-03-30 |  |  |  |  |  |  |  |  | 42h |  | 560 |  |  |
| 69 | 1.7.1.1.1 | **Implementação** |  | 0d | 2017-03-30 | 2017-03-30 |  |  |  |  |  |  |  |  | 40h |  | 540 |  |  |
| 70 | 1.7.1.1.1.1 | **[RFC01] Manter Usuários** |  | 0d | 2017-03-30 | 2017-03-30 |  |  |  |  |  |  |  |  | 20h |  | 300 |  |  |
| 71 | 1.7.1.1.1.1.1 | [RFS01] Cadastrar Usuários | manual | 1d | 2017-03-30 | 2017-03-30 |  |  |  |  |  |  |  | Any | 5h |  | 75 |  |  |
| 72 | 1.7.1.1.1.1.2 | [RFS02] Consultar Usuários | manual | 1d | 2017-03-30 | 2017-03-30 |  |  |  |  |  |  |  | Any | 5h |  | 75 |  |  |
| 73 | 1.7.1.1.1.1.3 | [RFS03] Alterar Usuários | manual | 1d | 2017-03-30 | 2017-03-30 |  |  |  |  |  |  |  | Any | 5h |  | 75 |  |  |
| 74 | 1.7.1.1.1.1.4 | [RFS04] Remover Usuários | manual | 1d | 2017-03-30 | 2017-03-30 |  |  |  |  |  |  |  | Any | 5h |  | 75 |  |  |
| 75 | 1.7.1.1.1.2 | **[RFC02] Manter Contato** |  | 0.5d | 2017-03-30 | 2017-03-30 |  |  |  |  |  |  |  |  | 20h |  | 240 |  |  |
| 76 | 1.7.1.1.1.2.1 | [RFS05] Cadastrar Contato | manual | 1d | 2017-03-30 | 2017-03-30 |  |  |  |  |  |  |  | Henrique | 5h |  | 60 |  |  |
| 77 | 1.7.1.1.1.2.2 | [RFS06] Consultar Contato | manual | 1d | 2017-03-30 | 2017-03-30 |  |  |  |  |  |  |  | Henrique | 5h |  | 60 |  |  |
| 78 | 1.7.1.1.1.2.3 | [RFS07] Alterar Contato | manual | 1d | 2017-03-30 | 2017-03-30 |  |  |  |  |  |  |  | Henrique | 5h |  | 60 |  |  |
| 79 | 1.7.1.1.1.2.4 | [RFS08] Remover Contato | manual | 1d | 2017-03-30 | 2017-03-30 |  |  |  |  |  |  |  | Henrique | 5h |  | 60 |  |  |

| ID | WBS | Task | Type | Duration | Start | Finish | Resources | Work | Cost |
| --- | --- | --- | --- | --- | --- | --- | --- | --- | --- |
| 80 | 1.7.1.1.2 | **Teste** |  | 0.5d | 2017-03-30 | 2017-03-30 |  | 2h | 20 |
| 81 | 1.7.1.1.2.1 | [RFC01] Manter Usuários | manual | 0.5d | 2017-03-30 | 2017-03-30 | Matheus | 1h | 10 |
| 82 | 1.7.1.1.2.2 | [RFC02] Manter Contato | manual | 0.5d | 2017-03-30 | 2017-03-30 | Matheus | 1h | 10 |
| 83 | 1.7.2 | **Release 02** |  | 2d | 2017-03-30 | 2017-03-31 |  | 42h | 420 |
| 84 | 1.7.2.1 | **Implementação / Teste** |  | 0d | 2017-03-30 | 2017-03-30 |  | 42h | 420 |
| 85 | 1.7.2.1.1 | **Implementação** |  | 0d | 2017-03-30 | 2017-03-30 |  | 40h | 400 |
| 86 | 1.7.2.1.1.1 | **[RFC03] Manter Conta Bancária** |  | 0d | 2017-03-30 | 2017-03-30 |  | 20h | 200 |
| 87 | 1.7.2.1.1.1.1 | [RFS09] Cadastrar Conta Bancaria | manual | 1d | 2017-03-30 | 2017-03-30 | Felipe | 5h | 50 |
| 88 | 1.7.2.1.1.1.2 | [RFS10] Consultar Conta Bancária | manual | 1d | 2017-03-30 | 2017-03-30 | Felipe | 5h | 50 |
| 89 | 1.7.2.1.1.1.3 | [RFS11] Alterar Conta Bancaria | manual | 1d | 2017-03-30 | 2017-03-30 | Felipe | 5h | 50 |
| 90 | 1.7.2.1.1.1.4 | [RFS12] Remover Conta Bancaria | manual | 1d | 2017-03-30 | 2017-03-30 | Felipe | 5h | 50 |
| 91 | 1.7.2.1.1.2 | **[RFC04] Manter Despesas** |  | 0d | 2017-03-30 | 2017-03-30 |  | 20h | 200 |
| 92 | 1.7.2.1.1.2.1 | [RFS13] Cadastrar Despesas | manual | 1d | 2017-03-30 | 2017-03-30 | Clayton | 5h | 50 |
| 93 | 1.7.2.1.1.2.2 | [RFS14] Consultar Despesas | manual | 1d | 2017-03-30 | 2017-03-30 | Clayton | 5h | 50 |
| 94 | 1.7.2.1.1.2.3 | [RFS15] Alterar Despesas | manual | 1d | 2017-03-30 | 2017-03-30 | Clayton | 5h | 50 |
| 95 | 1.7.2.1.1.2.4 | [RFS16] Remover Despesas | manual | 1d | 2017-03-30 | 2017-03-30 | Clayton | 5h | 50 |
| 96 | 1.7.2.1.2 | **Teste** |  | 0d | 2017-03-30 | 2017-03-30 |  | 2h | 20 |
| 97 | 1.7.2.1.2.1 | [RFC03] Manter Conta Bancária | manual | 1d | 2017-03-30 | 2017-03-30 | Matheus | 1h | 10 |
| 98 | 1.7.2.1.2.2 | [RFC04] Manter Despesas | manual | 1d | 2017-03-30 | 2017-03-30 | Matheus | 1h | 10 |
| 99 | 1.7.3 | **Release 03** |  | 2d | 2017-03-30 | 2017-03-31 |  | 27h | 295 |
| 100 | 1.7.3.1 | **Implementação / Teste** |  | 0d | 2017-03-30 | 2017-03-30 |  | 27h | 295 |
| 101 | 1.7.3.1.1 | **Implementação** |  | 0d | 2017-03-30 | 2017-03-30 |  | 25h | 275 |
| 102 | 1.7.3.1.1.1 | **[RFC05] Manter Receitas** |  | 0d | 2017-03-30 | 2017-03-30 |  | 20h | 200 |
| 103 | 1.7.3.1.1.1.1 | [RFS17] Cadastrar Receitas | manual | 1d | 2017-03-30 | 2017-03-30 | Matheus | 5h | 50 |
| 104 | 1.7.3.1.1.1.2 | [RFS18] Consultar Receitas | manual | 1d | 2017-03-30 | 2017-03-30 | Matheus | 5h | 50 |
| 105 | 1.7.3.1.1.1.3 | [RFS19] Alterar Receitas | manual | 1d | 2017-03-30 | 2017-03-30 | Matheus | 5h | 50 |
| 106 | 1.7.3.1.1.1.4 | [RFS20] Remover Receitas | manual | 1d | 2017-03-30 | 2017-03-30 | Matheus | 5h | 50 |

| ID | WBS | Task | Type | Duration | Start | Finish | Total slack | Resources | Work | Cost |
| --- | --- | --- | --- | --- | --- | --- | --- | --- | --- | --- |
| 107 | 1.7.3.1.1.2 | **[RFC06] Gerar Relatórios** |  | 0d | 2017-03-30 | 2017-03-30 |  |  | 5h | 75 |
| 108 | 1.7.3.1.1.2.1 | [RFS21] Gerar Relatório | manual | 1d | 2017-03-30 | 2017-03-30 |  | Any | 5h | 75 |
| 109 | 1.7.3.1.2 | **Teste** |  | 0d | 2017-03-30 | 2017-03-30 |  |  | 2h | 20 |
| 110 | 1.7.3.1.2.1 | [RFC05] Manter Receitas | manual | 0.5d | 2017-03-30 | 2017-03-30 |  | Felipe | 1h | 10 |
| 111 | 1.7.3.1.2.2 | [RFC06] Gerar Relatório | manual | 0.5d | 2017-03-30 | 2017-03-30 |  | Felipe | 1h | 10 |
| 112 | 1.7.4 | **Release 04** |  | 2d | 2017-03-30 | 2017-03-31 |  |  | 64h | 791 |
| 113 | 1.7.4.1 | **Implementação / Teste** |  | 0d | 2017-03-30 | 2017-03-30 |  |  | 24h | 286 |
| 114 | 1.7.4.1.1 | **Implementação** |  | 0d | 2017-03-30 | 2017-03-30 |  |  | 23h | 276 |
| 115 | 1.7.4.1.1.1 | **[RFC07] Manter Receitas** |  | 0d | 2017-03-30 | 2017-03-30 |  |  | 23h | 276 |
| 116 | 1.7.4.1.1.1.1 | [RFS22] Cadastrar Economias | manual | 1d | 2017-03-30 | 2017-03-30 |  | Henrique | 8h | 96 |
| 117 | 1.7.4.1.1.1.2 | [RFS23] Consultar Economias | manual | 1d | 2017-03-30 | 2017-03-30 |  | Henrique | 5h | 60 |
| 118 | 1.7.4.1.1.1.3 | [RFS24] Alterar Economias | manual | 1d | 2017-03-30 | 2017-03-30 |  | Henrique | 5h | 60 |
| 119 | 1.7.4.1.1.1.4 | [RFS25] Remover Economias | manual | 1d | 2017-03-30 | 2017-03-30 |  | Henrique | 5h | 60 |
| 120 | 1.7.4.1.2 | **Teste** |  | 0d | 2017-03-30 | 2017-03-30 |  |  | 1h | 10 |
| 121 | 1.7.4.1.2.1 | [RFC07] Manter Economias | manual | 0.5d | 2017-03-30 | 2017-03-30 |  | Matheus | 1h | 10 |
| 122 | 1.7.4.2 | **Fechamento** |  | 0d | 2017-03-30 | 2017-03-30 |  |  | 40h | 505 |
| 123 | 1.7.4.2.1 | Implantação |  | 1.88d | 2017-03-30 | 2017-03-31 | 65.12d | Any; Henrique | 30h | 405 |
| 124 | 1.7.4.2.2 | Avaliação | manual | 0.62d | 2017-03-30 | 2017-03-30 |  | Matheus | 5h | 50 |
| 125 | 1.7.4.2.3 | Conclusão |  | 0.31d | 2017-03-30 | 2017-03-30 | 66.69d | Matheus; Felipe | 5h | 50 |
